Schedule from MS Project, 2023-03-06 to 2024-01-05, costs in mx.
Microsoft

## Calendars

- Estándar: Mon-Fri 09:00-13:00, 15:00-19:00; Sat-Sun off.

## Resources

| Resource | Unit | Rate | Cost per use |
| --- | --- | --- | --- |
| Darián |  | 87 | 56000 |
| Liusmila |  | 87 | 56000 |
| Irais |  | 87 | 56000 |
| Eric |  | 87 | 56000 |
| Jhair |  | 87 | 56000 |
| LaptoL | Unidad | 5000 | 12000 |
| LaptoI | Unidad | 1000 | 12000 |
| LaptoE | Unidad | 1000 | 12000 |
| LaptoJ | Unidad | 5000 | 12000 |
| LaptoD | Unidad | 5000 | 12000 |
| Internet |  |  |  |
| Transporte |  |  |  |

## Schedule

| ID | WBS | Task | Type | Duration | Start | Finish | Predecessors | Total slack | Resources | Work | Cost |
| --- | --- | --- | --- | --- | --- | --- | --- | --- | --- | --- | --- |
| 1 | 1 | **Desarrollo Gestión de sistemas CUValles** |  | 220d | 2023-03-06 | 2024-01-05 |  | 0d | Internet [0.1%] | 2330h | 5,323,710 |
| 2 | 1.1 | **FASE DE INICIO** |  | 13d | 2023-03-06 | 2023-03-22 |  | 0d |  | 78h | 465,786 |
| 3 | 1.1.1 | Reunión de Visión del proyecto |  | 1d | 2023-03-06 | 2023-03-06 |  | 0d | Liusmila [75%]; LaptoL [1 Unidad]; Transporte [0.1%] | 6h | 59,522 |
| 4 | 1.1.2 | Declaración de la visión del proyecto |  | 2d | 2023-03-07 | 2023-03-08 | 3 | 0d | Liusmila [75%]; LaptoL [1 Unidad]; Transporte [0.1%] | 12h | 60,044 |
| 5 | 1.1.3 | Descripción del producto |  | 2d | 2023-03-09 | 2023-03-10 | 4 | 0d | LaptoL [1 Unidad]; Irais [75%] | 12h | 60,044 |
| 6 | 1.1.4 | Identificación de requisitos |  | 3d | 2023-03-13 | 2023-03-15 | 5 | 0d | Eric [75%]; LaptoE [1 Unidad]; Transporte [0.1%] | 18h | 56,566 |
| 7 | 1.1.5 | Identificar el Administrador y patrocinador |  | 1d | 2023-03-16 | 2023-03-16 | 6 | 0d | Liusmila [75%]; LaptoL [1 Unidad]; Transporte [0.1%] | 6h | 59,522 |
| 8 | 1.1.6 | Elaborar enunciado del Trabajo |  | 2d | 2023-03-17 | 2023-03-20 | 7 | 0d | Irais [75%]; LaptoI [1 Unidad] | 12h | 56,044 |
| 9 | 1.1.7 | Elaborar Acta Constitutiva del proyecto |  | 2d | 2023-03-21 | 2023-03-22 | 8 | 0d | Liusmila [75%]; LaptoL [1 Unidad]; Transporte [0.1%] | 12h | 60,044 |
| 10 | 1.1.8 | Fin de la fase de Inicio | milestone | 0d | 2023-03-22 | 2023-03-22 | 9 | 0d | Liusmila [75%]; LaptoL |  | 54,000 |
| 11 | 1.2 | **FASE DE PLANIFICACIÓN Y ESTIMACIÓN** |  | 125d | 2023-03-23 | 2023-09-13 | 2 | 0d |  | 1502h | 3,298,674 |
| 12 | 1.2.1 | **RECOLECCIÓN DE REQUISITOS** |  | 71d | 2023-03-23 | 2023-06-29 | 2 | 0d |  | 1052h | 1,227,524 |
| 13 | 1.2.1.1 | Determinar fuentes de requisitos y técnicas para recabarlos |  | 5d | 2023-03-23 | 2023-05-15 | 10 | 0d | Eric [75%]; LaptoE [1 Unidad]; Transporte [0.1%] | 30h | 57,610 |
| 14 | 1.2.1.2 | Ejecutar la recolección |  | 5d | 2023-05-16 | 2023-05-22 | 13 | 0d | Eric [75%]; LaptoE [1 Unidad]; Transporte [0.1%]; Irais [75%]; Jhair [75%]; LaptoD [1 Unidad]; LaptoI [1 Unidad]; LaptoJ [1 Unidad]; LaptoL [1 Unidad]; Darián [75%]; Liusmila [75%] | 150h | 300,050 |
| 15 | 1.2.1.3 | Analizar los requisitos (clasificar, priorizar, modelar) |  | 1d | 2023-05-23 | 2023-05-23 | 14 | 0d | Eric [75%]; LaptoE [1 Unidad]; Transporte [0.1%] | 6h | 55,522 |
| 16 | 1.2.1.4 | Documentar los requisitos |  | 12d | 2023-05-24 | 2023-06-29 | 15 | 0d | LaptoE [1 Unidad]; Transporte [0.1%]; Eric [75%]; Irais; Jhair; LaptoD [1 Unidad]; LaptoI [1 Unidad]; LaptoJ [1 Unidad]; LaptoL [1 Unidad]; Darián; Liusmila | 456h | 382,672 |
| 17 | 1.2.1.5 | Redactar las Historias de Usuario |  | 13.33d | 2023-06-12 | 2023-06-29 | 16FF | 0d | LaptoE [1 Unidad]; Transporte [0.1%]; Eric [75%]; Irais [75%]; Jhair [75%]; LaptoD [1 Unidad]; LaptoI [1 Unidad]; LaptoJ [1 Unidad]; LaptoL [1 Unidad]; Darián [75%]; Liusmila [75%] | 380h | 320,060 |
| 18 | 1.2.1.6 | Verificar los requisitos |  | 5d | 2023-06-23 | 2023-06-29 | 16FF | 0d | Eric [75%]; LaptoE [1 Unidad]; Transporte [0.1%] | 30h | 57,610 |
| 19 | 1.2.1.7 | Fin de Recolección de Requisitos | milestone | 0d | 2023-06-29 | 2023-06-29 | 18 | 0d | Eric [75%]; LaptoE; Transporte |  | 54,000 |
| 20 | 1.2.2 | **DEFINICIÓN DE ALCANCE** |  | 8d | 2023-06-30 | 2023-07-11 | 12 | 0d |  | 48h | 240,176 |
| 21 | 1.2.2.1 | Determinar el método de trabajo a aplicar |  | 1d | 2023-06-30 | 2023-06-30 | 18 | 0d | Jhair [75%]; LaptoJ [1 Unidad] | 6h | 59,522 |
| 22 | 1.2.2.2 | Definir el ciclo de vida del proyecto |  | 2d | 2023-07-03 | 2023-07-04 | 21 | 0d | Jhair [75%]; LaptoJ [1 Unidad] | 12h | 60,044 |
| 23 | 1.2.2.3 | Especificar la metodología del proyecto |  | 2d | 2023-07-05 | 2023-07-06 | 22 | 0d | Jhair [75%]; LaptoJ [1 Unidad] | 12h | 60,044 |
| 24 | 1.2.2.4 | Listar los entregables del proyecto |  | 3d | 2023-07-07 | 2023-07-11 | 23 | 0d | Jhair [75%]; LaptoJ [1 Unidad] | 18h | 60,566 |

| ID | WBS | Task | Duration | Start | Finish | Predecessors | Total slack | Resources | Work | Cost |
| --- | --- | --- | --- | --- | --- | --- | --- | --- | --- | --- |
| 25 | 1.2.3 | **CREACIÓN DEL EDT** | 1d | 2023-07-12 | 2023-07-12 | 20 | 0d |  | 6h | 59,522 |
| 26 | 1.2.3.1 | Elaborar EDT | 1d | 2023-07-12 | 2023-07-12 | 24 | 0d | LaptoD [1 Unidad]; Darián [75%] | 6h | 59,522 |
| 27 | 1.2.4 | **ADMINISTRACIÓN DEL TIEMPO** | 6d | 2023-07-13 | 2023-07-20 | 25 | 0d |  | 36h | 121,132 |
| 28 | 1.2.4.1 | Desarrollo del cronograma del proyecto | 5d | 2023-07-13 | 2023-07-19 | 25 | 0d | LaptoD [1 Unidad]; Darián [75%] | 30h | 61,610 |
| 29 | 1.2.4.2 | Desarrollo del Diagrama de Red | 1d | 2023-07-20 | 2023-07-20 | 28 | 0d | LaptoD [1 Unidad]; Darián [75%] | 6h | 59,522 |
| 30 | 1.2.5 | **ADMINISTRACIÓN DEL COSTO** | 10d | 2023-07-21 | 2023-08-03 | 27 | 0d |  | 60h | 123,220 |
| 31 | 1.2.5.1 | Preparación del Presupuesto | 5d | 2023-07-21 | 2023-07-27 | 29 | 0d | Liusmila [75%]; LaptoL [1 Unidad] | 30h | 61,610 |
| 32 | 1.2.5.2 | Elaboración del Flujo de Efectivo | 5d | 2023-07-28 | 2023-08-03 | 31 | 0d | Liusmila [75%]; LaptoL [1 Unidad] | 30h | 61,610 |
| 33 | 1.2.6 | **ADMINISTRACIÓN DE LA CALIDAD** | 5d | 2023-08-04 | 2023-08-10 | 30 | 0d |  | 30h | 57,610 |
| 34 | 1.2.6.1 | Planificación de la calidad | 5d | 2023-08-04 | 2023-08-10 | 32 | 0d | Irais [75%]; LaptoI [1 Unidad] | 30h | 57,610 |
| 35 | 1.2.7 | **ADMINISTRACIÓN DE RECURSOS HUMANOS** | 2d | 2023-08-11 | 2023-08-14 | 33 | 0d |  | 12h | 56,044 |
| 36 | 1.2.7.1 | Planificación de los recursos humano | 2d | 2023-08-11 | 2023-08-14 | 34 | 0d | Eric [75%]; LaptoE [1 Unidad]; Transporte [0.1%] | 12h | 56,044 |
| 37 | 1.2.8 | **ADMINISTRACIÓN DE RIESGOS** | 4d | 2023-08-15 | 2023-08-18 | 35 | 0d |  | 42h | 298,654 |
| 38 | 1.2.8.1 | Identiﬁcación de los Riesgos | 2d | 2023-08-15 | 2023-08-16 | 36 | 0d | Jhair [75%]; LaptoJ [1 Unidad] | 12h | 60,044 |
| 39 | 1.2.8.2 | Cualiﬁcación y cuantiﬁcación de los Riesgos | 1d | 2023-08-16 | 2023-08-16 | 38FF | 2d | Jhair [75%]; LaptoJ [1 Unidad] | 6h | 59,522 |
| 40 | 1.2.8.3 | Deﬁnición de acciones preventivas para los riesgos | 1d | 2023-08-16 | 2023-08-16 | 38FF | 2d | Jhair [75%]; LaptoJ [1 Unidad] | 6h | 59,522 |
| 41 | 1.2.8.4 | Definir las Acciones Correctivas | 1d | 2023-08-16 | 2023-08-16 | 38FF | 0d | Jhair [75%]; LaptoJ [1 Unidad] | 6h | 59,522 |
| 42 | 1.2.8.5 | Elaborar el Plan de respuesta a los riesgos | 2d | 2023-08-17 | 2023-08-18 | 41 | 0d | Jhair [75%]; LaptoJ [1 Unidad] | 12h | 60,044 |
| 43 | 1.2.9 | **ADMINISTRACIÓN DE INTEGRACIÓN** | 2d | 2023-08-21 | 2023-08-22 | 37 | 0d |  | 36h | 239,132 |
| 44 | 1.2.9.1 | Cruzar la información de los documentos obtenidos y veriﬁcar su consistencia | 1d | 2023-08-21 | 2023-08-21 | 42 | 0d | Jhair [75%]; LaptoJ [1 Unidad] | 6h | 59,522 |
| 45 | 1.2.9.2 | Completar la EDT, el Cronograma y el Presupuesto, incluyendo las actividades, tiempos y costos | 1d | 2023-08-22 | 2023-08-22 | 44 | 0d | Jhair [75%]; LaptoJ [1 Unidad] | 6h | 59,522 |
| 46 | 1.2.9.3 | Decidir sobre la administración del cambio y la administración de la conﬁguración | 2d | 2023-08-21 | 2023-08-22 | 45FF | 0d | Jhair [75%]; LaptoJ [1 Unidad] | 12h | 60,044 |
| 47 | 1.2.9.4 | Integrar el plan del proyecto | 2d | 2023-08-21 | 2023-08-22 | 46FF | 0d | Jhair [75%]; LaptoJ [1 Unidad] | 12h | 60,044 |
| 48 | 1.2.10 | **PLANIFICACIÓN DE SPRINT** | 2d | 2023-08-23 | 2023-08-24 | 43 | 0d |  | 24h | 230,088 |
| 49 | 1.2.10.1 | Reunión para Planificar los Sprint Backlog | 1d | 2023-08-23 | 2023-08-23 | 47 | 0d | Liusmila [75%]; Eric [75%]; Darián [75%]; LaptoE [1 Unidad]; LaptoL [1 Unidad]; LaptoD [1 Unidad] | 18h | 174,566 |
| 50 | 1.2.10.2 | Elaborar documento Sprint Backlog | 1d | 2023-08-24 | 2023-08-24 | 49 | 0d | Eric [75%]; LaptoE [1 Unidad] | 6h | 55,522 |

| ID | WBS | Task | Type | Duration | Start | Finish | Predecessors | Total slack | Resources | Work | Cost |
| --- | --- | --- | --- | --- | --- | --- | --- | --- | --- | --- | --- |
| 51 | 1.2.11 | **PLANIFICACIÓN DE CORRECCIÓN DE SPRINT** |  | 10d | 2023-08-31 | 2023-09-13 | 48FS+4d | 0d |  | 156h | 591,572 |
| 52 | 1.2.11.1 | Identificar el problema |  | 1d | 2023-08-31 | 2023-08-31 | 50 | 0d | Liusmila [75%]; Darián [75%]; Irais [75%]; LaptoD [1 Unidad]; LaptoI [1 Unidad]; LaptoL [1 Unidad] | 18h | 174,566 |
| 53 | 1.2.11.2 | Busqueda de solución |  | 2d | 2023-09-01 | 2023-09-04 | 52 | 0d | Liusmila [75%]; Darián [75%]; Irais [75%]; LaptoD [1 Unidad]; LaptoI [1 Unidad]; LaptoL [1 Unidad] | 36h | 176,132 |
| 54 | 1.2.11.3 | Planificar el Backlog |  | 5d | 2023-09-05 | 2023-09-11 | 53 | 0d | Liusmila [75%]; Darián [75%]; Irais [75%]; LaptoD [1 Unidad]; LaptoI [1 Unidad]; LaptoL [1 Unidad] | 90h | 180,830 |
| 55 | 1.2.11.4 | Elaborar documento del sprint Backlog |  | 2d | 2023-09-12 | 2023-09-13 | 54 | 0d | Darián [75%]; LaptoD [1 Unidad] | 12h | 60,044 |
| 56 | 1.2.12 | Fin de la fase de Planificación y Estimación | milestone | 0d | 2023-09-13 | 2023-09-13 | 55 | 0d | Darián [75%]; LaptoD |  | 54,000 |
| 57 | 1.3 | **FASE DE IMPLEMENTACIÓN** |  | 71d | 2023-09-14 | 2023-12-21 | 11 | 0d |  | 474h | 615,238 |
| 58 | 1.3.1 | Daily Standup |  | 2d | 2023-09-14 | 2023-09-15 | 55 | 0d | Liusmila [75%]; Darián [75%]; Eric [75%]; Irais [75%]; Jhair [75%]; LaptoD [1 Unidad]; LaptoE [1 Unidad]; LaptoI [1 Unidad]; LaptoJ [1 Unidad]; LaptoL [1 Unidad] | 60h | 292,220 |
| 59 | 1.3.2 | Implementación del sprint del Módulo Usuarios y Roles |  | 10d | 2023-09-18 | 2023-09-29 | 58 | 0d | Liusmila [75%]; LaptoL [1 Unidad] | 60h | 64,220 |
| 60 | 1.3.3 | Implementación del sprint del Módulo Áreas |  | 12d | 2023-10-02 | 2023-10-17 | 59 | 0d | Irais [75%]; LaptoI [1 Unidad] | 72h | 61,264 |
| 61 | 1.3.4 | Implementación del sprint del Módulo Procesos |  | 12d | 2023-10-18 | 2023-11-02 | 60 | 0d | Darián [75%]; LaptoD [1 Unidad] | 72h | 65,264 |
| 62 | 1.3.5 | Implementación del sprint del Módulo Actividad |  | 15d | 2023-11-03 | 2023-11-23 | 61 | 0d | Eric [75%]; LaptoE [1 Unidad] | 90h | 62,830 |
| 63 | 1.3.6 | Implementación del sprint del Módulo Formulario |  | 20d | 2023-11-24 | 2023-12-21 | 62 | 0d | Jhair [75%]; LaptoJ [1 Unidad] | 120h | 69,440 |
| 64 | 1.4 | **FASE DE REVICIÓN Y RESTROSPECTIVA** |  | 8d | 2023-12-22 | 2024-01-02 | 57 | 0d |  | 210h | 592,270 |
| 65 | 1.4.1 | Reunión de Retrospectiva |  | 1d | 2023-12-22 | 2023-12-22 | 63 | 7d | Darián [75%]; Eric [75%]; Internet [0.1%]; Irais [75%]; Jhair [75%]; LaptoD [1 Unidad]; LaptoE [1 Unidad]; LaptoI [1 Unidad]; LaptoJ [1 Unidad]; LaptoL [1 Unidad]; Liusmila [75%] | 30h | 289,610 |
| 66 | 1.4.2 | Revisión del sprint del Módulo Usuarios y Roles |  | 5d | 2023-12-22 | 2023-12-28 | 59 | 3d | Irais [75%]; LaptoI [1 Unidad] | 30h | 57,610 |
| 67 | 1.4.3 | Revisión del sprint del Módulo Áreas |  | 5d | 2023-12-22 | 2023-12-28 | 60 | 3d | Darián [75%]; LaptoD [1 Unidad] | 30h | 61,610 |
| 68 | 1.4.4 | Revisión del sprint del Módulo Procesos |  | 6d | 2023-12-22 | 2023-12-29 | 61 | 2d | Eric [75%]; LaptoE [1 Unidad] | 36h | 58,132 |
| 69 | 1.4.5 | Revisión del sprint del Módulo Actividad |  | 6d | 2023-12-22 | 2023-12-29 | 62 | 2d | Jhair [75%]; LaptoJ [1 Unidad] | 36h | 62,132 |
| 70 | 1.4.6 | Revisión del sprint del Módulo Formulario |  | 8d | 2023-12-22 | 2024-01-02 | 63 | 0d | Liusmila [75%]; LaptoL [1 Unidad] | 48h | 63,176 |
| 71 | 1.5 | **LANZAMIENTO** |  | 3d | 2024-01-03 | 2024-01-05 | 64 | 0d |  | 66h | 351,742 |
| 72 | 1.5.1 | Envio de Entregables |  | 1d | 2024-01-03 | 2024-01-03 | 64 | 0d | Liusmila [75%]; LaptoL [1 Unidad] | 6h | 59,522 |
| 73 | 1.5.2 | Retrospectiva del Proyecto |  | 2d | 2024-01-04 | 2024-01-05 | 72 | 0d | Darián [75%]; Eric [75%]; Internet [0.1%]; Irais [75%]; Jhair [75%]; LaptoD [1 Unidad]; LaptoE [1 Unidad]; LaptoI [1 Unidad]; LaptoJ [1 Unidad]; LaptoL [1 Unidad]; Liusmila [75%] | 60h | 292,220 |
